# «Проектирование информационной системы обработки и принятия заявок по проведению и настройке Интернет-соединения».

Schedule from MS Project, 2022-04-18 to 2022-06-08, status date 2022-06-08, scheduled back from the finish, 6 hours a day, costs in р., A marks actual dates.
Microsoft

## Calendars

- Стандартный: Mon-Sat 08:00-14:00; Sun off.

## Resources

| Resource | Unit | Rate |
| --- | --- | --- |
| Попов А.Е |  | 130 |
| ПК и ПО | маш./ч. | 237.02 |
| Интернет | дн. | 25 |
| Расходные материалы |  | 5700 |

## Schedule

| ID | WBS | Task | Type | Duration | Start | Finish | Predecessors | Complete | Baseline start | Baseline finish | Baseline duration | Constraint | Resources | Work | Actual work | Cost | Baseline cost | Actual cost |
| --- | --- | --- | --- | --- | --- | --- | --- | --- | --- | --- | --- | --- | --- | --- | --- | --- | --- | --- |
| 1 | 1 | **Анализ и планирование прокта** |  | 8d | 2022-04-18 A | 2022-04-26 A |  | 100% | 2021-04-20 | 2021-04-28 | 8d | as late as possible |  | 48h | 48h | 22,593.88 | 15,644.1 | 22,593.88 |
| 2 | 1.1 | Закупка необходимых материалов |  | 1d | 2022-04-18 A | 2022-04-18 A |  | 100% | 2021-04-20 | 2021-04-20 | 1d |  | Попов А.Е; Расходные материалы | 6h | 6h | 6,480 | 3,117.6 | 6,480 |
| 3 | 1.2 | Анализ предметной области, просмотр аналогов |  | 2d | 2022-04-19 A | 2022-04-20 A | 2 | 100% | 2021-04-21 | 2021-04-21 | 1d |  | Попов А.Е; ПК и ПО [7 маш./ч.]; Интернет [2 дн.] | 12h | 12h | 3,269.14 | 1,789.5 | 3,269.14 |
| 4 | 1.3 | Составление брифа и проведение брифинга с заказчиком |  | 1d | 2022-04-21 A | 2022-04-21 A | 3 | 100% | 2021-04-22 | 2021-04-22 | 1d |  | Попов А.Е; ПК и ПО [6 маш./ч.]; Интернет [1 дн.] | 6h | 6h | 2,227.12 | 1,789.5 | 2,227.12 |
| 5 | 1.4 | Формирование плана проекта |  | 2d | 2022-04-22 A | 2022-04-23 A | 4 | 100% | 2021-04-23 | 2021-04-23 | 1d |  | Попов А.Е; ПК и ПО [7 маш./ч.]; Интернет [2 дн.] | 12h | 12h | 3,269.14 | 1,789.5 | 3,269.14 |
| 6 | 1.5 | Анализ экономических затрат |  | 1d | 2022-04-25 A | 2022-04-25 A | 5 | 100% | 2021-04-24 | 2021-04-26 | 2d |  | Попов А.Е; ПК и ПО [12 маш./ч.]; Интернет [2 дн.] | 6h | 6h | 3,674.24 | 3,579 | 3,674.24 |
| 7 | 1.6 | Разработка и согласование ТЗ с заказчиком, подпись договора |  | 1d | 2022-04-26 A | 2022-04-26 A | 6 | 100% | 2021-04-27 | 2021-04-28 | 2d |  | Попов А.Е; ПК и ПО [12 маш./ч.]; Интернет [2 дн.] | 6h | 6h | 3,674.24 | 3,579 | 3,674.24 |
| 8 | 1.7 | Готовность технической документации | milestone | 0d | 2022-04-26 A | 2022-04-26 A | 7 | 100% | 2021-04-28 | 2021-04-28 | 0d |  |  |  |  |  |  |  |
| 9 | 2 | **Проектирование ИС** |  | 11d | 2022-04-27 A | 2022-05-09 A | 1 | 100% | 2021-04-29 | 2021-05-15 | 12d | as late as possible |  | 54h | 54h | 24,647.46 | 21,474 | 24,647.46 |
| 10 | 2.1 | Создание диаграмм, отражающих структуру компании |  | 3d | 2022-04-27 A | 2022-05-02 A |  | 100% | 2021-04-29 | 2021-05-04 | 3d | finish no later than 2022-05-02 | Попов А.Е; ПК и ПО [19 маш./ч.]; Интернет [4 дн.] | 18h | 18h | 6,943.38 | 5,368.5 | 6,943.38 |
| 11 | 2.2 | Реализация физической модели |  | 2d | 2022-05-03 A | 2022-05-04 A | 10 | 100% | 2021-05-05 | 2021-05-07 | 3d |  | Попов А.Е; ПК и ПО [18 маш./ч.]; Интернет [3 дн.] | 12h | 12h | 5,901.36 | 5,368.5 | 5,901.36 |
| 12 | 2.3 | Создание структуры и макета АИС |  | 1d | 2022-05-05 A | 2022-05-05 A | 11 | 100% | 2021-05-08 | 2021-05-08 | 1d |  | Попов А.Е; ПК и ПО [6 маш./ч.]; Интернет [1 дн.] | 6h | 6h | 2,227.12 | 1,789.5 | 2,227.12 |
| 13 | 2.4 | Разработка дизайна АИС |  | 2d | 2022-05-06 A | 2022-05-07 A | 12 | 100% | 2021-05-11 | 2021-05-14 | 4d |  | Попов А.Е; ПК и ПО [24 маш./ч.]; Интернет [4 дн.] | 12h | 12h | 7,348.48 | 7,158 | 7,348.48 |
| 14 | 2.5 | Утверждение макета и дизайна АИС |  | 1d | 2022-05-09 A | 2022-05-09 A | 13 | 100% | 2021-05-15 | 2021-05-15 | 1d |  | Попов А.Е; ПК и ПО [6 маш./ч.]; Интернет [1 дн.] | 6h | 6h | 2,227.12 | 1,789.5 | 2,227.12 |
| 15 | 3 | **Разработка** |  | 23d | 2022-05-10 A | 2022-06-04 A | 9 | 100% | 2021-05-17 | 2021-06-01 | 14d | as late as possible |  | 138h | 138h | 38,985.74 | 25,053 | 38,985.74 |
| 16 | 3.1 | Создание АИС по готовому макету |  | 5d | 2022-05-10 A | 2022-05-14 A |  | 100% | 2021-05-17 | 2021-05-22 | 6d |  | Попов А.Е; ПК и ПО [36 маш./ч.]; Интернет [6 дн.] | 30h | 30h | 12,582.72 | 10,737 | 12,582.72 |
| 17 | 3.2 | Создание функциональной части АИС |  | 13d | 2022-05-16 A | 2022-05-30 A | 16 | 100% | 2021-05-24 | 2021-05-29 | 6d | finish no later than 2022-05-30 | Попов А.Е; ПК и ПО [37 маш./ч.]; Интернет [7 дн.] | 78h | 78h | 19,084.74 | 10,737 | 19,084.74 |
| 18 | 3.3 | Наполнение сайта контентом |  | 3d | 2022-05-31 A | 2022-06-02 A | 17 | 100% | 2021-05-31 | 2021-05-31 | 1d |  | Попов А.Е; ПК и ПО [7 маш./ч.]; Интернет [2 дн.] | 18h | 18h | 4,049.14 | 1,789.5 | 4,049.14 |
| 19 | 3.4 | Компиляция АИС в полноценное приложение |  | 2d | 2022-06-03 A | 2022-06-04 A | 18 | 100% | 2021-06-01 | 2021-06-01 | 1d |  | Попов А.Е; ПК и ПО [7 маш./ч.]; Интернет [2 дн.] | 12h | 12h | 3,269.14 | 1,789.5 | 3,269.14 |
| 20 | 4 | **Тестирование** |  | 0.34d | 2022-06-06 A | 2022-06-06 A | 15 | 100% | 2021-06-02 | 2021-06-04 | 3d | as late as possible |  | 6h | 6h | 5,121.36 | 5,368.5 | 5,121.36 |
| 21 | 4.1 | Функциональное тестирование проекта |  | 0.33d | 2022-06-06 A | 2022-06-06 A |  | 100% | 2021-06-02 | 2021-06-02 | 1d |  | Попов А.Е; ПК и ПО [6 маш./ч.]; Интернет [1 дн.] | 1.98h | 1.98h | 1,704.52 | 1,789.5 | 1,704.52 |
| 22 | 4.2 | Тестирование юзабилити проекта |  | 0.34d | 2022-06-06 A | 2022-06-06 A | 21 | 100% | 2021-06-03 | 2021-06-03 | 1d |  | Попов А.Е; ПК и ПО [6 маш./ч.]; Интернет [1 дн.] | 2.04h | 2.04h | 1,712.32 | 1,789.5 | 1,712.32 |
| 23 | 4.3 | Исправление ошибок |  | 0.33d | 2022-06-06 A | 2022-06-06 A | 22 | 100% | 2021-06-04 | 2021-06-04 | 1d |  | Попов А.Е; ПК и ПО [6 маш./ч.]; Интернет [1 дн.] | 1.98h | 1.98h | 1,704.52 | 1,789.5 | 1,704.52 |
| 24 | 5 | **Эксплуатация** |  | 2d | 2022-06-07 A | 2022-06-08 A | 20 | 100% | 2021-06-05 | 2021-06-08 | 3d | as late as possible |  | 12h | 12h | 5,901.36 | 5,368.5 | 5,901.36 |
| 25 | 5.1 | Разработка инструкций по эксплуатации |  | 1d | 2022-06-07 A | 2022-06-07 A |  | 100% | 2021-06-05 | 2021-06-07 | 2d |  | Попов А.Е; ПК и ПО [12 маш./ч.]; Интернет [2 дн.] | 6h | 6h | 3,674.24 | 3,579 | 3,674.24 |
| 26 | 5.2 | Передача проекта |  | 1d | 2022-06-08 A | 2022-06-08 A | 25 | 100% | 2021-06-08 | 2021-06-08 | 1d |  | Попов А.Е; ПК и ПО [6 маш./ч.]; Интернет [1 дн.] | 6h | 6h | 2,227.12 | 1,789.5 | 2,227.12 |
| 27 | 5.3 | Завершение проекта | milestone | 0d | 2022-06-08 A | 2022-06-08 A | 26 | 100% | 2021-06-08 | 2021-06-08 | 0d |  |  |  |  |  |  |  |
